# Pronexe Project

Schedule from MS Project, 2020-03-17 to 2020-05-19, 7.5 hours a day, costs in €, A marks actual dates.

## Calendars

- Standard: Mon-Fri 08:00-12:00, 13:00-17:00; Sat-Sun off.
- Mi Calendario GPR: Mon-Fri 09:00-16:30; Sat-Sun off. Exceptions (off unless hours are given): 2020-05-01 (Día del trabajador).

## Resources

| Resource | Rate |
| --- | --- |
| programador1 | 8 |
| programador2 | 8 |
| programador3 | 8 |
| analista2 | 8 |
| Servidor | 10000 |
| analista1 | 8 |
| jefe_de_proyecto | 12 |
| q&a | 8 |
| programador4 | 8 |
| Suscripción pago mongoDB | 100 |
| Adobe Illustrator | 60 |

## Schedule

| ID | WBS | Task | Type | Duration | Start | Finish | Predecessors | Complete | Remaining | Baseline start | Baseline finish | Baseline duration | Total slack | Constraint | Calendar | Resources | Work | Actual work | Cost | Baseline cost | Actual cost |
| --- | --- | --- | --- | --- | --- | --- | --- | --- | --- | --- | --- | --- | --- | --- | --- | --- | --- | --- | --- | --- | --- |
| 1 | 1 | **PRONEXE** |  | 45d | 2020-03-17 A | 2020-05-19 |  | 50% | 22.61d | 2020-03-17 | 2020-05-14 | 41.4d | 0d |  | Mi Calendario GPR |  | 635h | 256.5h | 15,646 | 15,646 | 2,512 |
| 2 | 1.1 | **Análisis** |  | 29.33d | 2020-03-17 A | 2020-04-27 A |  | 100% |  | 2020-03-17 | 2020-04-27 | 29.33d |  |  | Mi Calendario GPR |  | 173.5h | 173.5h | 1,788 | 1,788 | 1,788 |
| 3 | 1.1.1 | **Elicitación de requisitos** |  | 2.8d | 2020-03-17 A | 2020-03-19 A |  | 100% |  | 2020-03-17 | 2020-03-19 | 2.8d |  |  | Mi Calendario GPR |  | 21h | 21h | 168 | 168 | 168 |
| 4 | 1.1.1.1 | Encuestas exploratorias |  | 5h | 2020-03-17 A | 2020-03-17 A |  | 100% |  | 2020-03-17 | 2020-03-17 | 5h |  |  | Mi Calendario GPR | analista1 | 5h | 5h | 40 | 40 | 40 |
| 5 | 1.1.1.2 | Obtener conclusiones |  | 5h | 2020-03-17 A | 2020-03-18 A | 4 | 100% |  | 2020-03-17 | 2020-03-18 | 5h |  |  | Mi Calendario GPR | analista1; analista2 | 5h | 5h | 40 | 40 | 40 |
| 6 | 1.1.1.3 | Valorar los posibles costes y beneficios |  | 11h | 2020-03-18 A | 2020-03-19 A | 5 | 100% |  | 2020-03-18 | 2020-03-19 | 11h |  |  | Mi Calendario GPR | analista1 | 11h | 11h | 88 | 88 | 88 |
| 7 | 1.1.1.4 | Documento de alcance | milestone | 0h | 2020-03-19 A | 2020-03-19 A | 6 | 100% |  | 2020-03-19 | 2020-03-19 | 0h |  |  |  |  |  |  |  |  |  |
| 8 | 1.1.2 | **Análisis de requisitos** |  | 5.33d | 2020-03-19 A | 2020-03-27 A |  | 100% |  | 2020-03-19 | 2020-03-27 | 5.27d |  |  | Mi Calendario GPR |  | 32h | 32h | 256 | 256 | 256 |
| 9 | 1.1.2.1 | Storyboards |  | 6.5h | 2020-03-19 A | 2020-03-20 A | 7 | 100% |  | 2020-03-19 | 2020-03-20 | 5h |  |  | Mi Calendario GPR | analista1 | 5h | 5h | 40 | 40 | 40 |
| 10 | 1.1.2.2 | Casos de uso |  | 4h | 2020-03-23 A | 2020-03-23 A | 9 | 100% |  | 2020-03-20 | 2020-03-23 | 4h |  |  | Mi Calendario GPR | analista2 | 4h | 4h | 32 | 32 | 32 |
| 11 | 1.1.2.3 | Diagrama UML |  | 3h | 2020-03-24 A | 2020-03-24 A | 10 | 100% |  | 2020-03-23 | 2020-03-24 | 3h |  |  | Mi Calendario GPR | analista2 | 3h | 3h | 24 | 24 | 24 |
| 12 | 1.1.2.4 | Prototipo inicial |  | 15h | 2020-03-24 A | 2020-03-27 A | 11 | 100% |  | 2020-03-24 | 2020-03-27 | 14.5h |  |  | Mi Calendario GPR | analista1; analista2 | 20h | 20h | 160 | 160 | 160 |
| 13 | 1.1.2.5 | Modelos y diagramas de análisis | milestone | 0h | 2020-03-27 A | 2020-03-27 A | 12 | 100% |  | 2020-03-27 | 2020-03-27 | 0h |  |  |  |  |  |  |  |  |  |
| 14 | 1.1.3 | **Validación** |  | 21.2d | 2020-03-27 A | 2020-04-27 A |  | 100% |  | 2020-03-27 | 2020-04-27 | 21.27d |  |  | Mi Calendario GPR |  | 120.5h | 120.5h | 1,364 | 1,364 | 1,364 |
| 15 | 1.1.3.1 | Pruebas del prototipo |  | 10.5h | 2020-03-27 A | 2020-03-30 A | 8 | 100% |  | 2020-03-27 | 2020-03-30 | 10.5h |  |  | Mi Calendario GPR | analista1; analista2 | 14h | 14h | 112 | 112 | 112 |
| 16 | 1.1.3.2 | Consulta a expertos |  | 6.5h | 2020-03-30 A | 2020-03-31 A | 15 | 100% |  | 2020-03-30 | 2020-03-31 | 6h |  |  | Mi Calendario GPR | analista2; analista1 | 6.5h | 6.5h | 52 | 52 | 52 |
| 17 | 1.1.3.3 | **Reuniones con interesados** |  | 19.13d | 2020-03-30 A | 2020-04-24 A |  | 100% |  | 2020-03-30 | 2020-04-24 | 19.2d |  |  | Mi Calendario GPR |  | 65h | 65h | 780 | 780 | 780 |
| 18 | 1.1.3.3.1 | Reuniones con interesados 1 |  | 15h | 2020-03-30 A | 2020-04-01 A | 15 | 100% |  | 2020-03-30 | 2020-04-01 | 15h |  | finish no earlier than 2020-03-24 | Mi Calendario GPR | jefe_de_proyecto | 15h | 15h | 180 | 180 | 180 |
| 19 | 1.1.3.3.2 | Reuniones con interesados 2 |  | 15h | 2020-04-06 A | 2020-04-07 A | 18 | 100% |  | 2020-04-06 | 2020-04-07 | 15h |  | start no earlier than 2020-04-06 | Mi Calendario GPR | jefe_de_proyecto | 15h | 15h | 180 | 180 | 180 |
| 20 | 1.1.3.3.3 | Reuniones con interesados 3 |  | 15h | 2020-04-13 A | 2020-04-14 A | 19 | 100% |  | 2020-04-13 | 2020-04-14 | 15h |  | start no earlier than 2020-04-13 | Mi Calendario GPR | jefe_de_proyecto | 15h | 15h | 180 | 180 | 180 |
| 21 | 1.1.3.3.4 | Reuniones con interesados 4 |  | 15h | 2020-04-20 A | 2020-04-21 A | 20 | 100% |  | 2020-04-20 | 2020-04-21 | 15h |  | start no earlier than 2020-04-20 | Mi Calendario GPR | jefe_de_proyecto | 15h | 15h | 180 | 180 | 180 |
| 22 | 1.1.3.3.5 | Reuniones con interesados 5 |  | 5h | 2020-04-24 A | 2020-04-24 A | 21 | 100% |  | 2020-04-24 | 2020-04-24 | 5h |  | start no earlier than 2020-04-24 | Mi Calendario GPR | jefe_de_proyecto | 5h | 5h | 60 | 60 | 60 |
| 23 | 1.1.3.4 | **Reuniones del equipo de desarrollo** |  | 17.8d | 2020-04-01 A | 2020-04-27 A |  | 100% |  | 2020-04-01 | 2020-04-27 | 17.87d |  |  | Mi Calendario GPR |  | 35h | 35h | 420 | 420 | 420 |
| 24 | 1.1.3.4.1 | Reuniones del equipo de desarrollo 1 |  | 7.5h | 2020-04-01 A | 2020-04-02 A | 18 | 100% |  | 2020-04-01 | 2020-04-02 | 7.5h |  | start no earlier than 2020-03-31 | Mi Calendario GPR | jefe_de_proyecto | 7.5h | 7.5h | 90 | 90 | 90 |
| 25 | 1.1.3.4.2 | Reuniones del equipo de desarrollo 2 |  | 7.5h | 2020-04-08 A | 2020-04-08 A | 19 | 100% |  | 2020-04-08 | 2020-04-08 | 7.5h |  | start no earlier than 2020-04-07 | Mi Calendario GPR | jefe_de_proyecto | 7.5h | 7.5h | 90 | 90 | 90 |
| 26 | 1.1.3.4.3 | Reuniones del equipo de desarrollo 3 |  | 7.5h | 2020-04-15 A | 2020-04-15 A | 20 | 100% |  | 2020-04-15 | 2020-04-15 | 7.5h |  | start no earlier than 2020-04-14 | Mi Calendario GPR | jefe_de_proyecto | 7.5h | 7.5h | 90 | 90 | 90 |
| 27 | 1.1.3.4.4 | Reuniones del equipo de desarrollo 4 |  | 7.5h | 2020-04-22 A | 2020-04-22 A | 21 | 100% |  | 2020-04-22 | 2020-04-22 | 7.5h |  | start no earlier than 2020-04-21 | Mi Calendario GPR | jefe_de_proyecto | 7.5h | 7.5h | 90 | 90 | 90 |
| 28 | 1.1.3.4.5 | Reuniones del equipo de desarrollo 5 |  | 5h | 2020-04-24 A | 2020-04-27 A | 22 | 100% |  | 2020-04-24 | 2020-04-27 | 5h |  | start no earlier than 2020-04-24 | Mi Calendario GPR | jefe_de_proyecto | 5h | 5h | 60 | 60 | 60 |
| 29 | 1.1.3.5 | Resumen de las pruebas y reuniones | milestone | 0h | 2020-04-27 A | 2020-04-27 A | 23 | 100% |  | 2020-04-27 | 2020-04-27 | 0h |  |  |  |  |  |  |  |  |  |

| ID | WBS | Task | Type | Duration | Start | Finish | Predecessors | Complete | Baseline start | Baseline finish | Baseline duration | Total slack | Free slack | Calendar | Resources | Work | Actual work | Cost | Baseline cost | Actual cost |
| --- | --- | --- | --- | --- | --- | --- | --- | --- | --- | --- | --- | --- | --- | --- | --- | --- | --- | --- | --- | --- |
| 30 | 1.2 | **Diseño** |  | 6d | 2020-03-31 A | 2020-04-08 A |  | 100% | 2020-03-31 | 2020-04-07 | 4.87d |  |  | Mi Calendario GPR | Adobe Illustrator | 83h | 83h | 724 | 724 | 724 |
| 31 | 1.2.1 | **Capa de presentacion o frontend** |  | 3.6d | 2020-03-31 A | 2020-04-06 A |  | 100% | 2020-03-31 | 2020-04-03 | 2.73d |  |  | Mi Calendario GPR |  | 52h | 52h | 416 | 416 | 416 |
| 32 | 1.2.1.1 | Vista del cliente |  | 14h | 2020-03-31 A | 2020-04-02 A | 16 | 100% | 2020-03-31 | 2020-04-02 | 14h |  |  | Mi Calendario GPR | programador1 | 14h | 14h | 112 | 112 | 112 |
| 33 | 1.2.1.2 | Vista del profesional |  | 14h | 2020-03-31 A | 2020-04-02 A | 16 | 100% | 2020-03-31 | 2020-04-02 | 14h |  |  | Mi Calendario GPR | programador2 | 14h | 14h | 112 | 112 | 112 |
| 34 | 1.2.1.3 | Vista del empleado |  | 14h | 2020-03-31 A | 2020-04-02 A | 16 | 100% | 2020-03-31 | 2020-04-02 | 14h |  |  | Mi Calendario GPR | programador4 | 14h | 14h | 112 | 112 | 112 |
| 35 | 1.2.1.4 | Versión web |  | 13h | 2020-03-31 A | 2020-04-06 A | 16 | 100% | 2020-03-31 | 2020-04-03 | 10h |  |  | Mi Calendario GPR | programador3 | 10h | 10h | 80 | 80 | 80 |
| 36 | 1.2.1.5 | Diseño de la capa de presentación | milestone | 0h | 2020-04-06 A | 2020-04-06 A | 32, 33, 34, 35 | 100% | 2020-04-03 | 2020-04-03 | 0h |  |  |  |  |  |  |  |  |  |
| 37 | 1.2.2 | **Capa lógica** |  | 1.07d | 2020-04-07 A | 2020-04-08 A |  | 100% | 2020-04-06 | 2020-04-07 | 0.8d |  |  | Mi Calendario GPR |  | 9h | 9h | 72 | 72 | 72 |
| 38 | 1.2.2.1 | Revisión del diagrama UML |  | 1h | 2020-04-07 A | 2020-04-07 A | 31, 42 | 100% | 2020-04-06 | 2020-04-07 | 1.25h |  |  | Mi Calendario GPR | analista2; programador1 | 2h | 2h | 16 | 16 | 16 |
| 39 | 1.2.2.2 | Establecimiento de librerias |  | 1h | 2020-04-07 A | 2020-04-08 A | 38 | 100% | 2020-04-07 | 2020-04-07 | 1h |  |  | Mi Calendario GPR | programador3 | 1h | 1h | 8 | 8 | 8 |
| 40 | 1.2.2.3 | Comunicacion con la capa de persistencia |  | 8h | 2020-04-07 A | 2020-04-08 A | 31, 42 | 100% | 2020-04-06 | 2020-04-07 | 6h |  |  | Mi Calendario GPR | programador4 | 6h | 6h | 48 | 48 | 48 |
| 41 | 1.2.2.4 | Diseño de la capa lógica | milestone | 0h | 2020-04-08 A | 2020-04-08 A | 38, 39, 40 | 100% | 2020-04-07 | 2020-04-07 | 0h |  |  |  |  |  |  |  |  |  |
| 42 | 1.2.3 | **Capa de persistencia** |  | 1.33d | 2020-04-06 A | 2020-04-07 A | 31 | 100% | 2020-04-03 | 2020-04-06 | 1.33d |  |  | Mi Calendario GPR |  | 22h | 22h | 176 | 176 | 176 |
| 43 | 1.2.3.1 | Diseño de las tablas y relaciones |  | 6h | 2020-04-06 A | 2020-04-06 A | 16 | 100% | 2020-04-03 | 2020-04-03 | 6h |  |  | Mi Calendario GPR | programador1 | 6h | 6h | 48 | 48 | 48 |
| 44 | 1.2.3.2 | Establecimiento de usuarios y permisos |  | 1h | 2020-04-06 A | 2020-04-06 A | 16 | 100% | 2020-04-03 | 2020-04-03 | 1h |  |  | Mi Calendario GPR | programador3 | 1h | 1h | 8 | 8 | 8 |
| 45 | 1.2.3.3 | Diseño de la base de datos |  | 10h | 2020-04-06 A | 2020-04-07 A | 16 | 100% | 2020-04-03 | 2020-04-06 | 10h |  |  | Mi Calendario GPR | programador2 | 10h | 10h | 80 | 80 | 80 |
| 46 | 1.2.3.4 | Comunicación con la capa lógica |  | 5h | 2020-04-06 A | 2020-04-06 A | 16 | 100% | 2020-04-03 | 2020-04-03 | 5h |  |  | Mi Calendario GPR | programador4 | 5h | 5h | 40 | 40 | 40 |
| 47 | 1.2.3.5 | Diseño de la capa de persistencia | milestone | 0h | 2020-04-07 A | 2020-04-07 A | 43, 44, 45, 46 | 100% | 2020-04-06 | 2020-04-06 | 0h |  |  |  |  |  |  |  |  |  |
| 48 | 1.3 | **Implementación** |  | 16.03d | 2020-04-08 | 2020-04-30 |  |  | 2020-04-07 | 2020-04-24 | 12.78d | 0.07d |  | Mi Calendario GPR |  | 237.5h |  | 1,900 | 1,900 |  |
| 49 | 1.3.1 | **Capa de presentación** |  | 5.85d | 2020-04-08 | 2020-04-16 |  |  | 2020-04-07 | 2020-04-13 | 4.11d | 0.07d | 0d | Mi Calendario GPR |  | 87h |  | 696 | 696 |  |
| 50 | 1.3.1.1 | Interfaz gráfica de la aplicación |  | 8.17h | 2020-04-08 | 2020-04-09 | 37 |  | 2020-04-07 | 2020-04-08 | 4.75h | 0.07d | 0d | Mi Calendario GPR | programador1; programador2; programador3 | 14h |  | 112 | 112 |  |
| 51 | 1.3.1.2 | Interfaz versión web |  | 22.07h | 2020-04-09 | 2020-04-14 | 50 |  | 2020-04-08 | 2020-04-10 | 15.32h | 0.54d | 0d | Mi Calendario GPR | programador2; programador3; programador1 | 53h |  | 424 | 424 |  |
| 52 | 1.3.1.3 | Implementar la conexión con la capa lógica |  | 10.17h | 2020-04-14 | 2020-04-16 | 50, 51 |  | 2020-04-10 | 2020-04-13 | 7.57h | 0.07d | 0d | Mi Calendario GPR | programador1; programador2; programador3 | 20h |  | 160 | 160 |  |
| 53 | 1.3.1.4 | Implementación de la capa de presentación | milestone | 0h | 2020-04-16 | 2020-04-16 | 50, 51, 52 |  | 2020-04-13 | 2020-04-13 | 0h | 0.07d |  |  |  |  |  |  |  |  |

| ID | WBS | Task | Type | Duration | Start | Finish | Predecessors | Baseline start | Baseline finish | Baseline duration | Total slack | Free slack | Calendar | Resources | Work | Cost | Baseline cost |
| --- | --- | --- | --- | --- | --- | --- | --- | --- | --- | --- | --- | --- | --- | --- | --- | --- | --- |
| 54 | 1.3.2 | **Capa de lógica** |  | 5.17d | 2020-04-16 | 2020-04-23 | 49 | 2020-04-13 | 2020-04-20 | 5.1d | 0.07d | 0d | Mi Calendario GPR |  | 78.5h | 628 | 628 |
| 55 | 1.3.2.1 | Acceso a la capa de persistencia |  | 22.25h | 2020-04-16 | 2020-04-22 | 37 | 2020-04-13 | 2020-04-17 | 22.25h | 0.17d | 0.1d | Mi Calendario GPR | programador3; programador1 | 30.5h | 244 | 244 |
| 56 | 1.3.2.2 | Implementar el diagrama UML |  | 30h | 2020-04-16 | 2020-04-22 | 37 | 2020-04-13 | 2020-04-15 | 15h | 0.07d | 0d | Mi Calendario GPR | programador2 | 30h | 240 | 240 |
| 57 | 1.3.2.3 | Contruir servicios web |  | 8.81h | 2020-04-22 | 2020-04-23 | 55, 56 | 2020-04-17 | 2020-04-20 | 9h | 0.07d | 0d | Mi Calendario GPR | programador2; programador3; programador1 | 18h | 144 | 144 |
| 58 | 1.3.2.4 | Implementación de la capa lógica | milestone | 0h | 2020-04-23 | 2020-04-23 | 55, 56, 57 | 2020-04-20 | 2020-04-20 | 0h | 0.67d |  |  |  |  |  |  |
| 59 | 1.3.3 | **Capa de persistencia** |  | 5d | 2020-04-23 | 2020-04-30 | 54 | 2020-04-20 | 2020-04-24 | 3.57d | 0.1d | 0d | Mi Calendario GPR |  | 72h | 576 | 576 |
| 60 | 1.3.3.1 | Estructura de datos |  | 30.5h | 2020-04-23 | 2020-04-30 | 37 | 2020-04-20 | 2020-04-23 | 20h | 0.1d | 0d | Mi Calendario GPR | programador2; programador3 | 40h | 320 | 320 |
| 61 | 1.3.3.2 | Lógica de los datos |  | 32h | 2020-04-23 | 2020-04-29 | 37 | 2020-04-20 | 2020-04-24 | 23.3h | 0.84d | 0.73d | Mi Calendario GPR | programador1 | 32h | 256 | 256 |
| 62 | 1.3.3.3 | Implementación de la capa de persistencia | milestone | 0h | 2020-04-30 | 2020-04-30 | 60, 61 | 2020-04-24 | 2020-04-24 | 0h | 0.03d |  |  |  |  |  |  |
| 63 | 1.4 | **Verificación y pruebas** |  | 9.1d | 2020-04-30 | 2020-05-14 |  | 2020-04-24 | 2020-05-11 | 10.18d | 0.1d |  | Mi Calendario GPR |  | 103h | 824 | 824 |
| 64 | 1.4.1 | **Pruebas funcionales** |  | 1.67d | 2020-04-30 | 2020-05-05 |  | 2020-04-24 | 2020-04-27 | 1.67d | 0.1d | 0d | Mi Calendario GPR |  | 12.5h | 100 | 100 |
| 65 | 1.4.1.1 | Pruebas unitarias |  | 12.5h | 2020-04-30 | 2020-05-05 | 49, 54, 59 | 2020-04-24 | 2020-04-27 | 12.5h | 0.1d | 0d | Mi Calendario GPR | q&a | 12.5h | 100 | 100 |
| 66 | 1.4.1.2 | Acta de aprobación | milestone | 0h | 2020-05-05 | 2020-05-05 | 65 | 2020-04-27 | 2020-04-27 | 0h | 0.1d |  |  |  |  |  |  |
| 67 | 1.4.2 | **Pruebas de integración** |  | 4.73d | 2020-05-05 | 2020-05-11 |  | 2020-04-27 | 2020-05-05 | 4.73d | 0.1d | 0d | Mi Calendario GPR |  | 35.5h | 284 | 284 |
| 68 | 1.4.2.1 | Pruebas de aplicación |  | 17.75h | 2020-05-05 | 2020-05-07 | 64 | 2020-04-27 | 2020-04-30 | 17.75h | 0.1d | 0d | Mi Calendario GPR | q&a | 17.75h | 142 | 142 |
| 69 | 1.4.2.2 | Pruebas de web |  | 17.75h | 2020-05-07 | 2020-05-11 | 68 | 2020-04-30 | 2020-05-05 | 17.75h | 0.1d | 0d | Mi Calendario GPR | q&a | 17.75h | 142 | 142 |
| 70 | 1.4.2.3 | Acta de aprobación | milestone | 0h | 2020-05-11 | 2020-05-11 | 68, 69 | 2020-05-05 | 2020-05-05 | 0h | 0.1d |  |  |  |  |  |  |
| 71 | 1.4.3 | **Pruebas de aceptación** |  | 0.96d | 2020-05-11 | 2020-05-12 |  | 2020-05-05 | 2020-05-06 | 1.43d | 0.1d |  | Mi Calendario GPR |  | 21.5h | 172 | 172 |
| 72 | 1.4.3.1 | Pruebas del departamento de calidad |  | 7.17h | 2020-05-11 | 2020-05-12 | 67 | 2020-05-05 | 2020-05-06 | 10.75h | 0.1d | 0d | Mi Calendario GPR | q&a; programador1; programador2 | 21.5h | 172 | 172 |
| 73 | 1.4.3.2 | Acta de aprobación | milestone | 0h | 2020-05-12 | 2020-05-12 | 72 | 2020-05-06 | 2020-05-06 | 0h | 2.52d |  |  |  |  |  |  |
| 74 | 1.4.4 | **Pruebas de estrés** |  | 1.75d | 2020-05-12 | 2020-05-14 |  | 2020-05-06 | 2020-05-11 | 2.35d | 0.1d | 0d | Mi Calendario GPR |  | 33.5h | 268 | 268 |
| 75 | 1.4.4.1 | Base de datos |  | 4.13h | 2020-05-12 | 2020-05-13 | 72 | 2020-05-06 | 2020-05-07 | 6h | 0.05d | 0d | Mi Calendario GPR | q&a; programador1; programador3; programador2 | 12h | 96 | 96 |
| 76 | 1.4.4.2 | Acceso al servidor |  | 5.2h | 2020-05-13 | 2020-05-14 | 75 | 2020-05-07 | 2020-05-08 | 5.38h | 0.05d | 0d | Mi Calendario GPR | q&a; programador1; programador3; programador2 | 10.75h | 86 | 86 |
| 77 | 1.4.4.3 | Acceso a la web |  | 3.32h | 2020-05-14 | 2020-05-14 | 76 | 2020-05-08 | 2020-05-11 | 6.22h | 0.05d | 0d | Mi Calendario GPR | q&a; programador2; programador3; programador1 | 10.75h | 86 | 86 |
| 78 | 1.4.4.4 | Acta de aprobación | milestone | 0h | 2020-05-14 | 2020-05-14 | 75, 76, 77 | 2020-05-11 | 2020-05-11 | 0h | 0.63d |  |  |  |  |  |  |

| ID | WBS | Task | Type | Duration | Start | Finish | Predecessors | Baseline start | Baseline finish | Baseline duration | Total slack | Calendar | Resources | Work | Cost | Baseline cost |
| --- | --- | --- | --- | --- | --- | --- | --- | --- | --- | --- | --- | --- | --- | --- | --- | --- |
| 79 | 1.5 | **Despliegue e implantación** |  | 3.43d | 2020-05-14 | 2020-05-19 |  | 2020-05-11 | 2020-05-14 | 3.2d | 0d | Mi Calendario GPR | Servidor; Suscripción pago mongoDB | 38h | 10,410 | 10,410 |
| 80 | 1.5.1 | **Base de datos** |  | 0.66d | 2020-05-14 | 2020-05-15 |  | 2020-05-11 | 2020-05-11 | 0.67d | 0d | Mi Calendario GPR |  | 5h | 40 | 40 |
| 81 | 1.5.1.1 | Poblar con datos |  | 3.33h | 2020-05-14 | 2020-05-15 | 74, 71 | 2020-05-11 | 2020-05-11 | 5h | 0d | Mi Calendario GPR | programador1; programador2; programador3 | 5h | 40 | 40 |
| 82 | 1.5.1.2 | Base de datos operativa | milestone | 0h | 2020-05-15 | 2020-05-15 | 81 | 2020-05-11 | 2020-05-11 | 0h | 0d |  |  |  |  |  |
| 83 | 1.5.2 | **Servidor web** |  | 1.31d | 2020-05-15 | 2020-05-18 |  | 2020-05-11 | 2020-05-12 | 1.07d | 0d | Mi Calendario GPR |  | 14h | 114 | 114 |
| 84 | 1.5.2.1 | Implementación de servidores |  | 4.33h | 2020-05-15 | 2020-05-18 | 80 | 2020-05-11 | 2020-05-12 | 5h | 0d | Mi Calendario GPR | programador1; programador2; programador3 | 10h | 80 | 80 |
| 85 | 1.5.2.2 | Comprar dominio |  | 0.5h | 2020-05-15 | 2020-05-15 | 80 | 2020-05-11 | 2020-05-11 | 0.5h | 1.24d | Mi Calendario GPR | jefe_de_proyecto; programador2 | 1h | 10 | 10 |
| 86 | 1.5.2.3 | Conexión con servicios de estadísticas |  | 3h | 2020-05-18 | 2020-05-18 | 84 | 2020-05-12 | 2020-05-12 | 3h | 0d | Mi Calendario GPR | programador1 | 3h | 24 | 24 |
| 87 | 1.5.2.4 | Servidor web operativo | milestone | 0h | 2020-05-18 | 2020-05-18 | 84, 85, 86 | 2020-05-12 | 2020-05-12 | 0h | 0d |  |  |  |  |  |
| 88 | 1.5.3 | **Aplicación** |  | 1.33d | 2020-05-18 | 2020-05-19 |  | 2020-05-12 | 2020-05-14 | 1.33d | 0d | Mi Calendario GPR |  | 17h | 136 | 136 |
| 89 | 1.5.3.1 | Detección de dependencias |  | 5h | 2020-05-18 | 2020-05-19 | 83 | 2020-05-12 | 2020-05-13 | 5h | 0d | Mi Calendario GPR | programador1 | 5h | 40 | 40 |
| 90 | 1.5.3.2 | Creación de contenedores |  | 5h | 2020-05-19 | 2020-05-19 | 89 | 2020-05-13 | 2020-05-14 | 5h | 0d | Mi Calendario GPR | programador1; programador2 | 10h | 80 | 80 |
| 91 | 1.5.3.3 | Despliegue de contenedores |  | 2h | 2020-05-19 | 2020-05-19 | 90FF | 2020-05-13 | 2020-05-14 | 2h | 0d | Mi Calendario GPR | programador2 | 2h | 16 | 16 |
| 92 | 1.5.3.4 | Aplicación desplegada | milestone | 0h | 2020-05-19 | 2020-05-19 | 89, 90, 91 | 2020-05-14 | 2020-05-14 | 0h | 0d |  |  |  |  |  |
| 93 | 1.5.4 | **Mantenimiento** |  | 0.13d | 2020-05-19 | 2020-05-19 |  | 2020-05-14 | 2020-05-14 | 0.13d | 0d | Mi Calendario GPR |  | 2h | 20 | 20 |
| 94 | 1.5.4.3 | Gestion de control |  | 1h | 2020-05-19 | 2020-05-19 | 88 | 2020-05-14 | 2020-05-14 | 1h | 0d | Mi Calendario GPR | programador1; jefe_de_proyecto | 2h | 20 | 20 |
| 95 | 1.5.4.2 | Resumen de las reuniones, controles y actualizaciones | milestone | 0h | 2020-05-19 | 2020-05-19 | 94 | 2020-05-14 | 2020-05-14 | 0h | 0d |  |  |  |  |  |
