# Pronexe Project

Schedule from MS Project, 2020-03-17 to 2020-08-17, 7.5 hours a day.

## Calendars

- Standard: Mon-Fri 08:00-12:00, 13:00-17:00; Sat-Sun off.
- Mi Calendario GPR: Mon-Fri 09:00-16:30; Sat-Sun off. Exceptions (off unless hours are given): 2020-05-01 (Día del trabajador).

## Schedule

| ID | WBS | Task | Type | Duration | Start | Finish | Predecessors | Total slack | Free slack | Constraint | Calendar |
| --- | --- | --- | --- | --- | --- | --- | --- | --- | --- | --- | --- |
| 1 | 1 | **PRONEXE** |  | 108.8d | 2020-03-17 09:00 | 2020-08-17 15:00 |  | 0d |  |  | Mi Calendario GPR |
| 2 | 1.1 | **Análisis** |  | 27d | 2020-03-17 09:00 | 2020-04-22 16:30 |  | 5d |  |  | Mi Calendario GPR |
| 3 | 1.1.1 | **Elicitación de requisitos** |  | 2.07d | 2020-03-17 09:00 | 2020-03-19 09:30 |  | 82.43d |  |  | Mi Calendario GPR |
| 4 | 1.1.1.1 | Encuestas exploratorias |  | 5h | 2020-03-17 09:00 | 2020-03-17 14:00 |  | 84.27d | 0d |  | Mi Calendario GPR |
| 5 | 1.1.1.2 | Obtener conclusiones |  | 5h | 2020-03-17 14:00 | 2020-03-18 11:30 | 4 | 84.27d | 0d |  | Mi Calendario GPR |
| 6 | 1.1.1.3 | Valorar los posibles costes y beneficios |  | 5.5h | 2020-03-18 11:30 | 2020-03-19 09:30 | 5 | 84.27d | 0d |  | Mi Calendario GPR |
| 7 | 1.1.1.4 | Documento de alcance | milestone | 0h | 2020-03-19 09:30 | 2020-03-19 09:30 | 6 | 90.93d | 0d |  |  |
| 8 | 1.1.2 | **Análisis de requisitos** |  | 2.93d | 2020-03-19 09:30 | 2020-03-23 16:30 |  | 82.43d |  |  | Mi Calendario GPR |
| 9 | 1.1.2.1 | Storyboards |  | 5h | 2020-03-19 09:30 | 2020-03-19 14:30 | 7 | 84.27d | 0d |  | Mi Calendario GPR |
| 10 | 1.1.2.2 | Casos de uso |  | 4h | 2020-03-19 14:30 | 2020-03-20 11:00 | 9 | 84.27d | 0d |  | Mi Calendario GPR |
| 11 | 1.1.2.3 | Diagrama UML |  | 3h | 2020-03-20 11:00 | 2020-03-20 14:00 | 10 | 84.27d | 0d |  | Mi Calendario GPR |
| 12 | 1.1.2.4 | Prototipo inicial |  | 10h | 2020-03-20 14:00 | 2020-03-23 16:30 | 11 | 84.27d | 0d |  | Mi Calendario GPR |
| 13 | 1.1.2.5 | Modelos y diagramas de análisis | milestone | 0h | 2020-03-23 16:30 | 2020-03-23 16:30 | 12 | 91.13d | 0.2d |  |  |
| 14 | 1.1.3 | **Validación** |  | 22d | 2020-03-24 09:00 | 2020-04-22 16:30 |  | 0d |  |  | Mi Calendario GPR |
| 15 | 1.1.3.1 | Pruebas del prototipo |  | 7h | 2020-03-24 09:00 | 2020-03-24 16:00 | 13 | 84.13d | 0d |  | Mi Calendario GPR |
| 16 | 1.1.3.2 | Consulta a expertos |  | 6.5h | 2020-03-24 16:00 | 2020-03-25 15:00 | 15 | 84.13d | 0d |  | Mi Calendario GPR |
| 17 | 1.1.3.3 | **Reuniones con interesados** |  | 152.5h | 2020-03-24 16:00 | 2020-04-22 11:00 | 15 |  |  |  | Mi Calendario GPR |
| 18 | 1.1.3.3.1 | Reuniones con interesados 1 |  | 2h | 2020-03-24 14:30 | 2020-03-24 16:30 |  | 102.4d |  | finish no earlier than 2020-03-24 16:30 | Mi Calendario GPR |
| 19 | 1.1.3.3.2 | Reuniones con interesados 2 |  | 2h | 2020-04-01 09:00 | 2020-04-01 11:00 |  | 97.13d |  | start no earlier than 2020-04-01 08:00 | Mi Calendario GPR |
| 20 | 1.1.3.3.3 | Reuniones con interesados 3 |  | 2h | 2020-04-08 09:00 | 2020-04-08 11:00 |  | 92.13d |  | start no earlier than 2020-04-08 08:00 | Mi Calendario GPR |
| 21 | 1.1.3.3.4 | Reuniones con interesados 4 |  | 2h | 2020-04-15 09:00 | 2020-04-15 11:00 |  | 87.13d |  | start no earlier than 2020-04-15 08:00 | Mi Calendario GPR |
| 22 | 1.1.3.3.5 | Reuniones con interesados 5 |  | 2h | 2020-04-22 09:00 | 2020-04-22 11:00 |  | 82.13d |  | start no earlier than 2020-04-22 09:00 | Mi Calendario GPR |
| 23 | 1.1.3.4 | **Reuniones del equipo de desarrollo** |  | 22d | 2020-03-24 09:00 | 2020-04-22 16:30 |  |  |  |  | Mi Calendario GPR |
| 24 | 1.1.3.4.1 | Reuniones del equipo de desarrollo 1 |  | 2h | 2020-03-24 09:00 | 2020-03-24 11:00 |  | 103.13d |  | start no earlier than 2020-03-24 09:00 | Mi Calendario GPR |
| 25 | 1.1.3.4.2 | Reuniones del equipo de desarrollo 2 |  | 2h | 2020-04-01 09:00 | 2020-04-01 11:00 |  | 97.13d |  | start no earlier than 2020-04-01 09:00 | Mi Calendario GPR |
| 26 | 1.1.3.4.3 | Reuniones del equipo de desarrollo 3 |  | 2h | 2020-04-08 09:00 | 2020-04-08 11:00 |  | 92.13d |  | start no earlier than 2020-04-08 09:00 | Mi Calendario GPR |
| 27 | 1.1.3.4.4 | Reuniones del equipo de desarrollo 4 |  | 2h | 2020-04-15 09:00 | 2020-04-15 11:00 |  | 87.13d |  | start no earlier than 2020-04-15 09:00 | Mi Calendario GPR |
| 28 | 1.1.3.4.5 | Reuniones del equipo de desarrollo 5 |  | 2h | 2020-04-22 09:00 | 2020-04-22 11:00 |  | 82.13d |  | start no earlier than 2020-04-22 09:00 | Mi Calendario GPR |
| 29 | 1.1.3.5 | Resumen de las pruebas y reuniones | milestone | 0h | 2020-04-22 16:30 | 2020-04-22 16:30 | 23 | 88.07d |  |  |  |

| ID | WBS | Task | Type | Duration | Start | Finish | Predecessors | Total slack | Free slack | Calendar |
| --- | --- | --- | --- | --- | --- | --- | --- | --- | --- | --- |
| 30 | 1.2 | **Diseño** |  | 2.67d | 2020-03-25 15:00 | 2020-03-30 12:30 | 16 | 82.43d |  | Mi Calendario GPR |
| 31 | 1.2.1 | **Capa de presentacion o frontend** |  | 1.87d | 2020-03-25 15:00 | 2020-03-27 14:00 |  | 82.43d |  | Mi Calendario GPR |
| 32 | 1.2.1.1 | Vista del cliente |  | 14h | 2020-03-25 15:00 | 2020-03-27 14:00 |  | 84.13d | 0d | Mi Calendario GPR |
| 33 | 1.2.1.2 | Vista del profesional |  | 14h | 2020-03-25 15:00 | 2020-03-27 14:00 |  | 84.13d | 0d | Mi Calendario GPR |
| 34 | 1.2.1.3 | Vista del empleado |  | 14h | 2020-03-25 15:00 | 2020-03-27 14:00 |  | 84.13d | 0d | Mi Calendario GPR |
| 35 | 1.2.1.4 | Versión web |  | 10h | 2020-03-25 15:00 | 2020-03-27 10:00 |  | 84.67d | 0.53d | Mi Calendario GPR |
| 36 | 1.2.1.5 | Diseño de la capa de presentación | milestone | 0h | 2020-03-27 14:00 | 2020-03-27 14:00 | 32, 33, 34, 35 | 90.8d | 0d |  |
| 37 | 1.2.2 | **Capa lógica** |  | 0.8d | 2020-03-27 14:00 | 2020-03-30 12:30 | 36, 47 | 82.43d |  | Mi Calendario GPR |
| 38 | 1.2.2.1 | Revisión del diagrama UML |  | 2h | 2020-03-27 14:00 | 2020-03-27 16:00 |  | 82.83d | 0d | Mi Calendario GPR |
| 39 | 1.2.2.2 | Establecimiento de librerias |  | 1h | 2020-03-27 16:00 | 2020-03-30 09:30 | 38 | 82.83d | 0.4d | Mi Calendario GPR |
| 40 | 1.2.2.3 | Comunicacion con la capa de persistencia |  | 6h | 2020-03-27 14:00 | 2020-03-30 12:30 |  | 82.43d | 0d | Mi Calendario GPR |
| 41 | 1.2.2.4 | Diseño de la capa lógica | milestone | 0h | 2020-03-30 12:30 | 2020-03-30 12:30 | 38, 39, 40 | 88.9d | 0d |  |
| 42 | 1.2.3 | **Capa de persistencia** |  | 0.8d | 2020-03-25 15:00 | 2020-03-26 13:30 |  | 83.5d |  | Mi Calendario GPR |
| 43 | 1.2.3.1 | Diseño de las tablas y relaciones |  | 6h | 2020-03-25 15:00 | 2020-03-26 13:30 |  | 83.5d | 0d | Mi Calendario GPR |
| 44 | 1.2.3.2 | Establecimiento de usuarios y permisos |  | 1h | 2020-03-25 15:00 | 2020-03-25 16:00 |  | 84.17d | 0.67d | Mi Calendario GPR |
| 45 | 1.2.3.3 | Diseño de la base de datos |  | 5h | 2020-03-25 15:00 | 2020-03-26 12:30 |  | 83.63d | 0.13d | Mi Calendario GPR |
| 46 | 1.2.3.4 | Comunicación con la capa lógica |  | 5h | 2020-03-25 15:00 | 2020-03-26 12:30 |  | 83.63d | 0.13d | Mi Calendario GPR |
| 47 | 1.2.3.5 | Diseño de la capa de persistencia | milestone | 0h | 2020-03-26 13:30 | 2020-03-26 13:30 | 43, 44, 45, 46 | 90.3d | 1.13d |  |
| 48 | 1.3 | **Implementación** |  | 4.53d | 2020-03-30 12:30 | 2020-04-03 16:30 | 41 | 82.43d |  | Mi Calendario GPR |
| 49 | 1.3.1 | **Capa de presentación** |  | 4.53d | 2020-03-30 12:30 | 2020-04-03 16:30 |  | 82.43d |  | Mi Calendario GPR |
| 50 | 1.3.1.1 | Interfaz gráfica de la aplicación |  | 14h | 2020-03-30 12:30 | 2020-04-01 11:30 |  | 85.1d | 2.67d | Mi Calendario GPR |
| 51 | 1.3.1.2 | Interfaz versión web |  | 34h | 2020-03-30 12:30 | 2020-04-03 16:30 |  | 82.43d | 0d | Mi Calendario GPR |
| 52 | 1.3.1.3 | Implementar la conexión con la capa lógica |  | 20h | 2020-03-30 12:30 | 2020-04-02 10:00 |  | 84.3d | 1.87d | Mi Calendario GPR |
| 53 | 1.3.1.4 | Implementación de la capa de presentación | milestone | 0h | 2020-04-03 16:30 | 2020-04-03 16:30 | 50, 51, 52 | 89.13d | 0.2d |  |

| ID | WBS | Task | Type | Duration | Start | Finish | Predecessors | Total slack | Free slack | Calendar |
| --- | --- | --- | --- | --- | --- | --- | --- | --- | --- | --- |
| 54 | 1.3.2 | **Capa de lógica** |  | 4d | 2020-03-30 12:30 | 2020-04-03 12:30 |  | 82.97d |  | Mi Calendario GPR |
| 55 | 1.3.2.1 | Acceso a la capa de persistencia |  | 20h | 2020-03-30 12:30 | 2020-04-02 10:00 |  | 84.3d | 1.33d | Mi Calendario GPR |
| 56 | 1.3.2.2 | Implementar el diagrama UML |  | 30h | 2020-03-30 12:30 | 2020-04-03 12:30 |  | 82.97d | 0d | Mi Calendario GPR |
| 57 | 1.3.2.3 | Contruir servicios web |  | 28h | 2020-03-30 12:30 | 2020-04-03 10:30 |  | 83.23d | 0.27d | Mi Calendario GPR |
| 58 | 1.3.2.4 | Implementación de la capa lógica | milestone | 0h | 2020-04-03 12:30 | 2020-04-03 12:30 | 55, 56, 57 | 89.6d | 0.67d |  |
| 59 | 1.3.3 | **Capa de persistencia** |  | 2.67d | 2020-03-30 12:30 | 2020-04-02 10:00 |  | 84.3d |  | Mi Calendario GPR |
| 60 | 1.3.3.1 | Estructura de datos |  | 20h | 2020-03-30 12:30 | 2020-04-02 10:00 |  | 84.3d | 0d | Mi Calendario GPR |
| 61 | 1.3.3.2 | Lógica de los datos |  | 16h | 2020-03-30 12:30 | 2020-04-01 13:30 |  | 84.83d | 0.53d | Mi Calendario GPR |
| 62 | 1.3.3.3 | Implementación de la capa de persistencia | milestone | 0h | 2020-04-02 10:00 | 2020-04-02 10:00 | 60, 61 | 90.93d | 2d |  |
| 63 | 1.4 | **Verificación y pruebas** |  | 6.9d | 2020-04-06 09:00 | 2020-04-14 15:45 | 53, 58, 62 | 82.43d |  | Mi Calendario GPR |
| 64 | 1.4.1 | **Pruebas funcionales** |  | 1.67d | 2020-04-06 09:00 | 2020-04-07 14:00 |  | 82.43d |  | Mi Calendario GPR |
| 65 | 1.4.1.1 | Pruebas unitarias |  | 12.5h | 2020-04-06 09:00 | 2020-04-07 14:00 |  | 82.43d | 0d | Mi Calendario GPR |
| 66 | 1.4.1.2 | Acta de aprobación | milestone | 0h | 2020-04-07 14:00 | 2020-04-07 14:00 | 65 | 89.17d | 0d |  |
| 67 | 1.4.2 | **Pruebas de integración** |  | 2.37d | 2020-04-07 14:00 | 2020-04-10 09:15 | 66 | 82.43d |  | Mi Calendario GPR |
| 68 | 1.4.2.1 | Pruebas de aplicación |  | 17.75h | 2020-04-07 14:00 | 2020-04-10 09:15 |  | 82.43d | 0d | Mi Calendario GPR |
| 69 | 1.4.2.2 | Pruebas de web |  | 17.75h | 2020-04-07 14:00 | 2020-04-10 09:15 |  | 82.43d | 0d | Mi Calendario GPR |
| 70 | 1.4.2.3 | Acta de aprobación | milestone | 0h | 2020-04-10 09:15 | 2020-04-10 09:15 | 68, 69 | 88.9d | 0d |  |
| 71 | 1.4.3 | **Pruebas de aceptación** |  | 2.87d | 2020-04-10 09:15 | 2020-04-14 15:45 | 70 | 82.43d |  | Mi Calendario GPR |
| 72 | 1.4.3.1 | Pruebas del departamento de calidad |  | 21.5h | 2020-04-10 09:15 | 2020-04-14 15:45 |  | 82.43d | 0d | Mi Calendario GPR |
| 73 | 1.4.3.2 | Acta de aprobación | milestone | 0h | 2020-04-14 15:45 | 2020-04-14 15:45 | 72 | 89.17d | 0d |  |
| 74 | 1.4.4 | **Pruebas de estrés** |  | 1.6d | 2020-04-10 09:15 | 2020-04-13 13:45 | 70 | 83.7d |  | Mi Calendario GPR |
| 75 | 1.4.4.1 | Base de datos |  | 12h | 2020-04-10 09:15 | 2020-04-13 13:45 |  | 83.7d | 0d | Mi Calendario GPR |
| 76 | 1.4.4.2 | Acceso al servidor |  | 10.75h | 2020-04-10 09:15 | 2020-04-13 12:30 |  | 83.87d | 0.17d | Mi Calendario GPR |
| 77 | 1.4.4.3 | Acceso a la web |  | 10.75h | 2020-04-10 09:15 | 2020-04-13 12:30 |  | 83.87d | 0.17d | Mi Calendario GPR |
| 78 | 1.4.4.4 | Acta de aprobación | milestone | 0h | 2020-04-13 13:45 | 2020-04-13 13:45 | 75, 76, 77 | 90.5d | 1.33d |  |

| ID | WBS | Task | Type | Duration | Start | Finish | Predecessors | Total slack | Free slack | Constraint | Calendar |
| --- | --- | --- | --- | --- | --- | --- | --- | --- | --- | --- | --- |
| 79 | 1.5 | **Despliegue e implementación** |  | 87.9d | 2020-04-14 15:45 | 2020-08-17 15:00 | 73, 78 | 0d |  |  | Mi Calendario GPR |
| 80 | 1.5.1 | **Base de datos** |  | 0.67d | 2020-04-14 15:45 | 2020-04-15 13:15 |  | 82.43d |  |  | Mi Calendario GPR |
| 81 | 1.5.1.1 | Poblar con datos |  | 5h | 2020-04-14 15:45 | 2020-04-15 13:15 |  | 82.43d | 0d |  | Mi Calendario GPR |
| 82 | 1.5.1.2 | Base de datos operativa | milestone | 0h | 2020-04-15 13:15 | 2020-04-15 13:15 | 81 | 89.17d | 0d |  |  |
| 83 | 1.5.2 | **Servidor web** |  | 1.73d | 2020-04-15 13:15 | 2020-04-17 11:15 | 82 | 82.43d |  |  | Mi Calendario GPR |
| 84 | 1.5.2.1 | Implementación de servidores |  | 10h | 2020-04-15 13:15 | 2020-04-16 15:45 |  | 82.43d | 0d |  | Mi Calendario GPR |
| 85 | 1.5.2.2 | Comprar dominio |  | 1h | 2020-04-15 13:15 | 2020-04-15 14:15 |  | 84.03d | 1.6d |  | Mi Calendario GPR |
| 86 | 1.5.2.3 | Conexión con servicios de estadísticas |  | 3h | 2020-04-16 15:45 | 2020-04-17 11:15 | 84 | 82.43d | 0d |  | Mi Calendario GPR |
| 87 | 1.5.2.4 | Servidor web operativo | milestone | 0h | 2020-04-17 11:15 | 2020-04-17 11:15 | 84, 85, 86 | 88.83d | 0d |  |  |
| 88 | 1.5.3 | **Aplicación** |  | 2.27d | 2020-04-17 11:15 | 2020-04-21 13:15 | 87 | 82.43d |  |  | Mi Calendario GPR |
| 89 | 1.5.3.1 | Detección de dependencias |  | 5h | 2020-04-17 11:15 | 2020-04-17 16:15 |  | 82.43d | 0d |  | Mi Calendario GPR |
| 90 | 1.5.3.2 | Creación de contenedores |  | 10h | 2020-04-17 16:15 | 2020-04-21 11:15 | 89 | 82.43d | 0d |  | Mi Calendario GPR |
| 91 | 1.5.3.3 | Despliegue de contenedores |  | 2h | 2020-04-21 11:15 | 2020-04-21 13:15 | 90 | 82.43d | 0d |  | Mi Calendario GPR |
| 92 | 1.5.3.4 | Aplicación desplegada | milestone | 0h | 2020-04-21 13:15 | 2020-04-21 13:15 | 89, 90, 91 | 89.17d | 0d |  |  |
| 93 | 1.5.4 | **Mantenimiento** |  | 83.23d | 2020-04-21 13:15 | 2020-08-17 15:00 | 92 | 0d |  |  | Mi Calendario GPR |
| 94 | 1.5.4.1 | **Actualizaciones** |  | 83.23d | 2020-04-21 13:15 | 2020-08-17 15:00 |  | 0d |  |  | Mi Calendario GPR |
| 95 | 1.5.4.1.1 | Actualizaciones 1 |  | 6h | 2020-04-21 13:15 | 2020-04-22 11:45 |  | 82.43d |  | start no earlier than 2020-04-20 09:00 | Mi Calendario GPR |
| 96 | 1.5.4.1.2 | Actualizaciones 2 |  | 6h | 2020-05-18 09:00 | 2020-05-18 15:00 |  | 65d |  | start no earlier than 2020-05-17 08:00 | Mi Calendario GPR |
| 97 | 1.5.4.1.3 | Actualizaciones 3 |  | 6h | 2020-06-17 09:00 | 2020-06-17 15:00 |  | 43d |  | start no earlier than 2020-06-17 08:00 | Mi Calendario GPR |
| 98 | 1.5.4.1.4 | Actualizaciones 4 |  | 6h | 2020-07-17 09:00 | 2020-07-17 15:00 |  | 21d |  | start no earlier than 2020-07-17 09:00 | Mi Calendario GPR |
| 99 | 1.5.4.1.5 | Actualizaciones 5 |  | 6h | 2020-08-17 09:00 | 2020-08-17 15:00 |  | 0d |  | start no earlier than 2020-08-17 09:00 | Mi Calendario GPR |
| 100 | 1.5.4.2 | **Reuniones del equipo de desarrollo** |  | 82.7d | 2020-04-21 13:15 | 2020-08-17 11:00 |  | 0.53d |  |  | Mi Calendario GPR |
| 101 | 1.5.4.2.1 | Reuniones del equipo de desarrollo 1 |  | 2h | 2020-04-21 13:15 | 2020-04-21 15:15 |  | 82.97d |  | start no earlier than 2020-04-20 09:00 | Mi Calendario GPR |
| 102 | 1.5.4.2.2 | Reuniones del equipo de desarrollo 2 |  | 2h | 2020-05-18 09:00 | 2020-05-18 11:00 |  | 65.53d |  | start no earlier than 2020-05-18 09:00 | Mi Calendario GPR |
| 103 | 1.5.4.2.3 | Reuniones del equipo de desarrollo 3 |  | 2h | 2020-06-17 09:00 | 2020-06-17 11:00 |  | 43.53d |  | start no earlier than 2020-06-17 09:00 | Mi Calendario GPR |
| 104 | 1.5.4.2.4 | Reuniones del equipo de desarrollo 4 |  | 2h | 2020-07-17 09:00 | 2020-07-17 11:00 |  | 21.53d |  | start no earlier than 2020-07-17 09:00 | Mi Calendario GPR |
| 105 | 1.5.4.2.5 | Reuniones del equipo de desarrollo 5 |  | 2h | 2020-08-17 09:00 | 2020-08-17 11:00 |  | 0.53d |  | start no earlier than 2020-08-17 09:00 | Mi Calendario GPR |
| 106 | 1.5.4.3 | Gestion de control |  | 2h | 2020-04-21 13:15 | 2020-04-21 15:15 |  | 82.97d |  |  | Mi Calendario GPR |
| 107 | 1.5.4.4 | Resumen de las reuniones, controles y actualizaciones | milestone | 0h | 2020-08-17 15:00 | 2020-08-17 15:00 | 95, 96, 97, 98, 99, 101, 102, 103, 104, 105, 106 | 0d |  |  |  |
